# 机端部署App开发计划

Schedule from a web Gantt chart, 2024-04-29 to 2024-05-07.
Saturdays and Sundays are off

## Schedule

| ID | WBS | Task | Duration | Start | Finish | Predecessors | Status |
| --- | --- | --- | --- | --- | --- | --- | --- |
| 2 | 1 | **需求确认** | 3d | 2024-04-29 | 2024-05-01 |  |  |
| 3 | 1.1 | 需求定义 | 1d | 2024-04-29 | 2024-04-29 |  |  |
| 4 | 1.2 | 需求评审发布 | 1d | 2024-04-30 | 2024-04-30 | 3 | waiting |
| 5 | 1.3 | 成熟度定义 | 1d | 2024-05-01 | 2024-05-01 | 4 | waiting |
| 6 | 2 | **方案设计** | 3d | 2024-05-01 | 2024-05-03 |  |  |
| 7 | 2.1 | 系统方案设计 | 1d | 2024-05-01 | 2024-05-01 | 4 | waiting |
| 8 | 2.2 | 系统方案评审发布 | 1d | 2024-05-02 | 2024-05-02 | 7 | waiting |
| 9 | 2.3 | UX方案设计评审 | 1d | 2024-05-01 | 2024-05-01 | 4 | waiting |
| 10 | 2.4 | 接口定义 | 1d | 2024-05-03 | 2024-05-03 | 8 | waiting |
| 11 | 3 | **软件开发** | 7d | 2024-04-29 | 2024-05-07 |  |  |
| 12 | 3.1 | **智能化软件** | 2d | 2024-05-06 | 2024-05-07 |  |  |
| 13 | 3.1.1 | 代码实现 | 1d | 2024-05-06 | 2024-05-06 | 10 | waiting |
| 14 | 3.1.2 | 单元测试 | 1d | 2024-05-07 | 2024-05-07 | 13 | waiting |
| 15 | 3.2 | **云控系统软件** | 1d | 2024-05-07 | 2024-05-07 |  |  |
| 16 | 3.2.1 | 代码实现 | 1d | 2024-05-07 | 2024-05-07 |  |  |
| 17 | 3.2.2 | 单元测试 | 1d | 2024-05-07 | 2024-05-07 |  |  |
| 18 | 3.3 | **应用化系统软件** | 1d | 2024-05-07 | 2024-05-07 |  |  |
| 19 | 3.3.1 | 代码实现 | 1d | 2024-05-07 | 2024-05-07 |  |  |
| 20 | 3.3.2 | 单元测试 | 1d | 2024-05-07 | 2024-05-07 |  |  |
| 21 | 3.4 | 功能联调 | 1d | 2024-04-29 | 2024-04-29 |  |  |
| 22 | 3.5 | 版本提测 | 1d | 2024-04-29 | 2024-04-29 |  |  |
| 23 | 4 | **集成测试** | 1d | 2024-04-29 | 2024-04-29 |  |  |
| 24 | 4.1 | 功能性能测试 | 1d | 2024-04-29 | 2024-04-29 |  |  |
| 25 | 4.2 | Bug修复 | 1d | 2024-04-29 | 2024-04-29 |  |  |

| ID | WBS | Task | Duration | Start | Finish |
| --- | --- | --- | --- | --- | --- |
| 26 | 5 | **系统确认** | 1d | 2024-04-29 | 2024-04-29 |
| 27 | 5.1 | 产品验收 | 1d | 2024-04-29 | 2024-04-29 |
